| task_id | source_id | source_unique_id | source_guid | wbs | outline_level | name | task_type | active | scheduling_mode | project_task_type | effective_calendar_id | planned_start | planned_finish | duration_minutes | source_work_minutes | percent_complete | constraint | source_calculation | parent_task_id |
| --- | --- | --- | --- | --- | --- | --- | --- | --- | --- | --- | --- | --- | --- | --- | --- | --- | --- | --- | --- |
| task:116 | 1 | 116 | E3739720-D5F3-EF11-8B1D-7C214ADD20B5 | 1 | 1 | 闵行区北横泾泵闸新建工程 | summary | True | automatic | FIXED_DURATION | calendar:1 | 2026-05-18T08:00:00+08:00 | 2028-05-16T17:00:00+08:00 | 350400 | 0 | 0 | AS_SOON_AS_POSSIBLE | 2026-05-18T08:00:00+08:00 2028-05-16T17:00:00+08:00 2026-06-02T08:00:00+08:00 2028-05-16T17:00:00+08:00 0 0 True |  |
| task:38 | 2 | 38 | C0739720-D5F3-EF11-8B1D-7C214ADD20B5 | 1.1 | 2 | 围堰施工 | summary | True | automatic | FIXED_DURATION | calendar:1 | 2026-05-18T08:00:00+08:00 | 2026-06-21T17:00:00+08:00 | 16800 | 0 | 0 | AS_SOON_AS_POSSIBLE | 2026-05-18T08:00:00+08:00 2026-06-21T17:00:00+08:00 2026-06-02T08:00:00+08:00 2026-07-06T17:00:00+08:00 7200 7200  | task:116 |
| task:39 | 3 | 39 | C1739720-D5F3-EF11-8B1D-7C214ADD20B5 | 1.1.1 | 3 | 内、外河围堰施工 | activity | True | automatic | FIXED_UNITS | calendar:1 | 2026-05-18T08:00:00+08:00 | 2026-06-16T17:00:00+08:00 | 14400 | 0 | 0 | START_NO_EARLIER_THAN 2026-05-18T08:00:00+08:00 | 2026-05-18T08:00:00+08:00 2026-06-16T17:00:00+08:00 2026-06-02T08:00:00+08:00 2026-07-01T17:00:00+08:00 7200 0  | task:38 |
| task:41 | 4 | 41 | C2739720-D5F3-EF11-8B1D-7C214ADD20B5 | 1.1.2 | 3 | 基坑排水 | activity | True | automatic | FIXED_UNITS | calendar:1 | 2026-06-17T08:00:00+08:00 | 2026-06-21T17:00:00+08:00 | 2400 | 0 | 0 | AS_SOON_AS_POSSIBLE | 2026-06-17T08:00:00+08:00 2026-06-21T17:00:00+08:00 2026-07-02T08:00:00+08:00 2026-07-06T17:00:00+08:00 7200 0  | task:38 |
| task:42 | 5 | 42 | C3739720-D5F3-EF11-8B1D-7C214ADD20B5 | 1.2 | 2 | 深基坑施工 | summary | True | automatic | FIXED_DURATION | calendar:1 | 2026-06-22T08:00:00+08:00 | 2027-01-01T17:00:00+08:00 | 93120 | 0 | 0 | AS_SOON_AS_POSSIBLE | 2026-06-22T08:00:00+08:00 2027-01-01T17:00:00+08:00 2026-07-07T08:00:00+08:00 2028-05-16T17:00:00+08:00 7200 7200  | task:116 |
| task:259 | 6 | 259 | 12749720-D5F3-EF11-8B1D-7C214ADD20B5 | 1.2.1 | 3 | 河底清障、老闸结构物拆除 | activity | True | automatic | FIXED_UNITS | calendar:1 | 2026-06-22T08:00:00+08:00 | 2026-07-06T17:00:00+08:00 | 7200 | 0 | 0 | AS_SOON_AS_POSSIBLE | 2026-06-22T08:00:00+08:00 2026-07-06T17:00:00+08:00 2026-07-07T08:00:00+08:00 2026-07-21T17:00:00+08:00 7200 0  | task:42 |
| task:260 | 7 | 260 | 13749720-D5F3-EF11-8B1D-7C214ADD20B5 | 1.2.2 | 3 | 基坑填土、场地平整 | activity | True | automatic | FIXED_UNITS | calendar:1 | 2026-07-07T08:00:00+08:00 | 2026-07-16T17:00:00+08:00 | 4800 | 0 | 0 | START_NO_EARLIER_THAN 2026-03-01T08:00:00+08:00 | 2026-07-07T08:00:00+08:00 2026-07-16T17:00:00+08:00 2026-07-22T08:00:00+08:00 2026-07-31T17:00:00+08:00 7200 0  | task:42 |
| task:229 | 8 | 229 | 01749720-D5F3-EF11-8B1D-7C214ADD20B5 | 1.2.3 | 3 | SMW工法桩、围护三轴搅拌桩施工 | activity | True | automatic | FIXED_UNITS | calendar:1 | 2026-07-17T08:00:00+08:00 | 2026-08-05T17:00:00+08:00 | 9600 | 0 | 0 | AS_SOON_AS_POSSIBLE | 2026-07-17T08:00:00+08:00 2026-08-05T17:00:00+08:00 2026-08-01T08:00:00+08:00 2026-08-20T17:00:00+08:00 7200 0  | task:42 |
| task:298 | 9 | 298 | 1B749720-D5F3-EF11-8B1D-7C214ADD20B5 | 1.2.4 | 3 | 灌注桩施工 | activity | True | automatic | FIXED_UNITS | calendar:1 | 2026-08-06T08:00:00+08:00 | 2026-10-04T17:00:00+08:00 | 28800 | 0 | 0 | START_NO_EARLIER_THAN 2026-08-01T08:00:00+08:00 | 2026-08-06T08:00:00+08:00 2026-10-04T17:00:00+08:00 2026-08-21T08:00:00+08:00 2026-10-19T17:00:00+08:00 7200 0  | task:42 |
| task:312 | 10 | 312 | E22C74E5-BD13-F111-8BF0-7C214ADD20B5 | 1.2.5 | 3 | 三轴搅拌桩坑内加固 | activity | True | automatic | FIXED_UNITS | calendar:1 | 2026-08-06T08:00:00+08:00 | 2026-09-14T17:00:00+08:00 | 19200 | 0 | 0 | AS_SOON_AS_POSSIBLE | 2026-08-06T08:00:00+08:00 2026-09-14T17:00:00+08:00 2028-04-07T08:00:00+08:00 2028-05-16T17:00:00+08:00 292800 292800  | task:42 |
| task:230 | 11 | 230 | 02749720-D5F3-EF11-8B1D-7C214ADD20B5 | 1.2.6 | 3 | 高压旋喷桩 | activity | True | automatic | FIXED_UNITS | calendar:1 | 2026-08-06T08:00:00+08:00 | 2026-08-11T17:00:00+08:00 | 2880 | 0 | 0 | AS_SOON_AS_POSSIBLE | 2026-08-06T08:00:00+08:00 2026-08-11T17:00:00+08:00 2026-10-24T08:00:00+08:00 2026-10-29T17:00:00+08:00 37920 30720  | task:42 |
| task:301 | 12 | 301 | 443DD68B-F5AA-F011-8BC3-7C214ADD20B5 | 1.2.7 | 3 | 钢筋砼板桩 | activity | True | automatic | FIXED_UNITS | calendar:1 | 2026-10-05T08:00:00+08:00 | 2026-10-09T17:00:00+08:00 | 2400 | 0 | 0 | AS_SOON_AS_POSSIBLE | 2026-10-05T08:00:00+08:00 2026-10-09T17:00:00+08:00 2026-10-25T08:00:00+08:00 2026-10-29T17:00:00+08:00 9600 2400  | task:42 |
| task:238 | 13 | 238 | 05749720-D5F3-EF11-8B1D-7C214ADD20B5 | 1.2.8 | 3 | 压密注浆 | activity | True | automatic | FIXED_UNITS | calendar:1 | 2026-10-05T08:00:00+08:00 | 2026-10-14T17:00:00+08:00 | 4800 | 0 | 0 | AS_SOON_AS_POSSIBLE | 2026-10-05T08:00:00+08:00 2026-10-14T17:00:00+08:00 2026-10-20T08:00:00+08:00 2026-10-29T17:00:00+08:00 7200 0  | task:42 |
| task:300 | 14 | 300 | 1C749720-D5F3-EF11-8B1D-7C214ADD20B5 | 1.2.9 | 3 | 第一道支撑施工 | activity | True | automatic | FIXED_UNITS | calendar:1 | 2026-10-15T08:00:00+08:00 | 2026-11-23T17:00:00+08:00 | 19200 | 0 | 0 | AS_SOON_AS_POSSIBLE | 2026-10-15T08:00:00+08:00 2026-11-23T17:00:00+08:00 2026-10-30T08:00:00+08:00 2026-12-08T17:00:00+08:00 7200 0  | task:42 |
| task:180 | 15 | 180 | F8739720-D5F3-EF11-8B1D-7C214ADD20B5 | 1.2.10 | 3 | 基坑降水 | activity | True | manual | FIXED_UNITS | calendar:1 | 2026-11-25T08:00:00+08:00 | 2026-12-04T17:00:00+08:00 | 4800 | 0 | 0 | AS_SOON_AS_POSSIBLE | 2026-11-25T08:00:00+08:00 2026-12-04T17:00:00+08:00 2026-12-10T08:00:00+08:00 2026-12-20T08:00:00+08:00 7200 0  | task:42 |
| task:53 | 16 | 53 | C6739720-D5F3-EF11-8B1D-7C214ADD20B5 | 1.2.11 | 3 | 土方开挖 | activity | True | automatic | FIXED_UNITS | calendar:1 | 2026-12-05T08:00:00+08:00 | 2026-12-12T17:00:00+08:00 | 3840 | 0 | 0 | FINISH_NO_EARLIER_THAN 2026-12-04T17:00:00+08:00 | 2026-12-05T08:00:00+08:00 2026-12-12T17:00:00+08:00 2026-12-20T08:00:00+08:00 2026-12-27T17:00:00+08:00 7200 0  | task:42 |
| task:54 | 17 | 54 | C7739720-D5F3-EF11-8B1D-7C214ADD20B5 | 1.2.12 | 3 | 第二道支撑施工 | activity | True | automatic | FIXED_UNITS | calendar:1 | 2026-12-13T08:00:00+08:00 | 2026-12-22T17:00:00+08:00 | 4800 | 0 | 0 | AS_SOON_AS_POSSIBLE | 2026-12-13T08:00:00+08:00 2026-12-22T17:00:00+08:00 2026-12-28T08:00:00+08:00 2027-01-06T17:00:00+08:00 7200 0  | task:42 |
| task:243 | 18 | 243 | 08749720-D5F3-EF11-8B1D-7C214ADD20B5 | 1.2.13 | 3 | 泵闸土方开挖 | activity | True | automatic | FIXED_UNITS | calendar:1 | 2026-12-30T08:00:00+08:00 | 2027-01-01T17:00:00+08:00 | 1440 | 0 | 0 | AS_SOON_AS_POSSIBLE | 2026-12-30T08:00:00+08:00 2027-01-01T17:00:00+08:00 2027-01-14T08:00:00+08:00 2027-01-16T17:00:00+08:00 7200 0  | task:42 |
| task:56 | 19 | 56 | C8739720-D5F3-EF11-8B1D-7C214ADD20B5 | 1.3 | 2 | 泵闸结构（2.5除夕） | summary | True | automatic | FIXED_DURATION | calendar:1 | 2027-01-02T08:00:00+08:00 | 2027-09-19T17:00:00+08:00 | 125280 | 0 | 0 | AS_SOON_AS_POSSIBLE | 2027-01-02T08:00:00+08:00 2027-09-19T17:00:00+08:00 2027-01-17T08:00:00+08:00 2028-05-10T17:00:00+08:00 7200 0  | task:116 |
| task:58 | 20 | 58 | C9739720-D5F3-EF11-8B1D-7C214ADD20B5 | 1.3.1 | 3 | 泵站底板、墩墙吊模至第二道支撑下 | activity | True | automatic | FIXED_UNITS | calendar:1 | 2027-01-02T08:00:00+08:00 | 2027-01-31T17:00:00+08:00 | 14400 | 0 | 0 | AS_SOON_AS_POSSIBLE | 2027-01-02T08:00:00+08:00 2027-01-31T17:00:00+08:00 2027-01-17T08:00:00+08:00 2027-02-15T17:00:00+08:00 7200 7200  | task:56 |
| task:61 | 21 | 61 | CC739720-D5F3-EF11-8B1D-7C214ADD20B5 | 1.3.2 | 3 | 内、外河进水池开挖 | activity | True | automatic | FIXED_UNITS | calendar:1 | 2027-02-21T08:00:00+08:00 | 2027-02-22T17:00:00+08:00 | 960 | 0 | 0 | START_NO_EARLIER_THAN 2027-02-21T08:00:00+08:00 | 2027-02-21T08:00:00+08:00 2027-02-22T17:00:00+08:00 2027-02-21T08:00:00+08:00 2027-02-22T17:00:00+08:00 0 0 True | task:56 |
| task:139 | 22 | 139 | E7739720-D5F3-EF11-8B1D-7C214ADD20B5 | 1.3.3 | 3 | 外河进水池底板施工 | activity | True | automatic | FIXED_UNITS | calendar:1 | 2027-02-23T08:00:00+08:00 | 2027-03-09T17:00:00+08:00 | 7200 | 0 | 0 | AS_SOON_AS_POSSIBLE | 2027-02-23T08:00:00+08:00 2027-03-09T17:00:00+08:00 2028-04-26T08:00:00+08:00 2028-05-10T17:00:00+08:00 205440 205440  | task:56 |
| task:140 | 23 | 140 | E8739720-D5F3-EF11-8B1D-7C214ADD20B5 | 1.3.4 | 3 | 内河进水池底板施工 | activity | True | automatic | FIXED_UNITS | calendar:1 | 2027-02-23T08:00:00+08:00 | 2027-03-09T17:00:00+08:00 | 7200 | 0 | 0 | AS_SOON_AS_POSSIBLE | 2027-02-23T08:00:00+08:00 2027-03-09T17:00:00+08:00 2027-02-23T08:00:00+08:00 2027-03-09T17:00:00+08:00 0 0 True | task:56 |
| task:59 | 24 | 59 | CA739720-D5F3-EF11-8B1D-7C214ADD20B5 | 1.3.5 | 3 | 素砼传力带施工 | activity | True | automatic | FIXED_UNITS | calendar:1 | 2027-03-10T08:00:00+08:00 | 2027-03-11T17:00:00+08:00 | 960 | 0 | 0 | AS_SOON_AS_POSSIBLE | 2027-03-10T08:00:00+08:00 2027-03-11T17:00:00+08:00 2027-03-10T08:00:00+08:00 2027-03-11T17:00:00+08:00 0 0 True | task:56 |
| task:60 | 25 | 60 | CB739720-D5F3-EF11-8B1D-7C214ADD20B5 | 1.3.6 | 3 | 第二道支撑拆除 | activity | True | automatic | FIXED_UNITS | calendar:1 | 2027-03-28T08:00:00+08:00 | 2027-04-03T17:00:00+08:00 | 3360 | 0 | 0 | AS_SOON_AS_POSSIBLE | 2027-03-28T08:00:00+08:00 2027-04-03T17:00:00+08:00 2027-03-28T08:00:00+08:00 2027-04-03T17:00:00+08:00 0 0 True | task:56 |
| task:307 | 26 | 307 | 6C3A3289-35AB-F011-8BC3-7C214ADD20B5 | 1.3.7 | 3 | 泵室流道、隔墙施工 | activity | True | automatic | FIXED_UNITS | calendar:1 | 2027-04-04T08:00:00+08:00 | 2027-05-03T17:00:00+08:00 | 14400 | 0 | 0 | AS_SOON_AS_POSSIBLE | 2027-04-04T08:00:00+08:00 2027-05-03T17:00:00+08:00 2028-04-11T08:00:00+08:00 2028-05-10T17:00:00+08:00 179040 179040  | task:56 |
| task:141 | 27 | 141 | E9739720-D5F3-EF11-8B1D-7C214ADD20B5 | 1.3.8 | 3 | 闸室底板施工 | activity | True | automatic | FIXED_UNITS | calendar:1 | 2027-04-04T08:00:00+08:00 | 2027-04-18T17:00:00+08:00 | 7200 | 0 | 0 | AS_SOON_AS_POSSIBLE | 2027-04-04T08:00:00+08:00 2027-04-18T17:00:00+08:00 2027-04-04T08:00:00+08:00 2027-04-18T17:00:00+08:00 0 0 True | task:56 |
| task:315 | 28 | 315 | 64BC92F3-BF13-F111-8BF0-7C214ADD20B5 | 1.3.9 | 3 | 内河消力池底板施工（至一道支撑） | activity | True | automatic | FIXED_UNITS | calendar:1 | 2027-04-21T08:00:00+08:00 | 2027-04-30T17:00:00+08:00 | 4800 | 0 | 0 | AS_SOON_AS_POSSIBLE | 2027-04-21T08:00:00+08:00 2027-04-30T17:00:00+08:00 2027-04-21T08:00:00+08:00 2027-04-30T17:00:00+08:00 0 0 True | task:56 |
| task:314 | 29 | 314 | 62BC92F3-BF13-F111-8BF0-7C214ADD20B5 | 1.3.10 | 3 | 外河消力池底板施工（至一道支撑） | activity | True | automatic | FIXED_UNITS | calendar:1 | 2027-04-21T08:00:00+08:00 | 2027-04-30T17:00:00+08:00 | 4800 | 0 | 0 | AS_SOON_AS_POSSIBLE | 2027-04-21T08:00:00+08:00 2027-04-30T17:00:00+08:00 2027-04-21T08:00:00+08:00 2027-04-30T17:00:00+08:00 0 0 True | task:56 |
| task:65 | 30 | 65 | CD739720-D5F3-EF11-8B1D-7C214ADD20B5 | 1.3.11 | 3 | 泵室、闸室墩墙浇筑至一道支撑下 | activity | True | automatic | FIXED_UNITS | calendar:1 | 2027-04-04T08:00:00+08:00 | 2027-05-03T17:00:00+08:00 | 14400 | 0 | 0 | AS_SOON_AS_POSSIBLE | 2027-04-04T08:00:00+08:00 2027-05-03T17:00:00+08:00 2027-04-13T08:00:00+08:00 2027-05-12T17:00:00+08:00 4320 0  | task:56 |
| task:77 | 31 | 77 | CF739720-D5F3-EF11-8B1D-7C214ADD20B5 | 1.3.12 | 3 | 外河进水池墩墙施工至一道支撑下 | activity | True | automatic | FIXED_UNITS | calendar:1 | 2027-05-07T08:00:00+08:00 | 2027-05-21T17:00:00+08:00 | 7200 | 0 | 0 | AS_SOON_AS_POSSIBLE | 2027-05-07T08:00:00+08:00 2027-05-21T17:00:00+08:00 2027-05-16T08:00:00+08:00 2027-05-30T17:00:00+08:00 4320 0  | task:56 |
| task:311 | 32 | 311 | AF30414A-F1AC-F011-8BC4-7C214ADD20B5 | 1.3.13 | 3 | 内河进水池墩墙施工至一道支撑下 | activity | True | automatic | FIXED_UNITS | calendar:1 | 2027-05-22T08:00:00+08:00 | 2027-06-05T17:00:00+08:00 | 7200 | 0 | 0 | AS_SOON_AS_POSSIBLE | 2027-05-22T08:00:00+08:00 2027-06-05T17:00:00+08:00 2027-05-31T08:00:00+08:00 2027-06-14T17:00:00+08:00 4320 4320  | task:56 |
| task:303 | 33 | 303 | EB61DC6E-F8AA-F011-8BC3-7C214ADD20B5 | 1.3.14 | 3 | 外河海漫段、进水渠施工 | activity | True | automatic | FIXED_UNITS | calendar:1 | 2027-05-01T08:00:00+08:00 | 2027-05-25T17:00:00+08:00 | 12000 | 0 | 0 | AS_SOON_AS_POSSIBLE | 2027-05-01T08:00:00+08:00 2027-05-25T17:00:00+08:00 2027-05-01T08:00:00+08:00 2027-05-25T17:00:00+08:00 0 0 True | task:56 |
| task:302 | 34 | 302 | E961DC6E-F8AA-F011-8BC3-7C214ADD20B5 | 1.3.15 | 3 | 内河海漫段、进水渠施工 | activity | True | automatic | FIXED_UNITS | calendar:1 | 2027-05-01T08:00:00+08:00 | 2027-05-25T17:00:00+08:00 | 12000 | 0 | 0 | AS_SOON_AS_POSSIBLE | 2027-05-01T08:00:00+08:00 2027-05-25T17:00:00+08:00 2027-05-01T08:00:00+08:00 2027-05-25T17:00:00+08:00 0 0 True | task:56 |
| task:162 | 35 | 162 | ED739720-D5F3-EF11-8B1D-7C214ADD20B5 | 1.3.16 | 3 | 外河翼墙施工至第一道支撑下 | activity | True | automatic | FIXED_UNITS | calendar:1 | 2027-05-26T08:00:00+08:00 | 2027-06-14T17:00:00+08:00 | 9600 | 0 | 0 | AS_SOON_AS_POSSIBLE | 2027-05-26T08:00:00+08:00 2027-06-14T17:00:00+08:00 2027-05-26T08:00:00+08:00 2027-06-14T17:00:00+08:00 0 0 True | task:56 |
| task:304 | 36 | 304 | 9D22B30B-FBAA-F011-8BC3-7C214ADD20B5 | 1.3.17 | 3 | 内河翼墙施工至第一道支撑下 | activity | True | automatic | FIXED_UNITS | calendar:1 | 2027-05-26T08:00:00+08:00 | 2027-06-14T17:00:00+08:00 | 9600 | 0 | 0 | AS_SOON_AS_POSSIBLE | 2027-05-26T08:00:00+08:00 2027-06-14T17:00:00+08:00 2027-05-26T08:00:00+08:00 2027-06-14T17:00:00+08:00 0 0 True | task:56 |
| task:245 | 37 | 245 | 0A749720-D5F3-EF11-8B1D-7C214ADD20B5 | 1.3.18 | 3 | 防冲槽施工 | activity | True | automatic | FIXED_UNITS | calendar:1 | 2027-05-26T08:00:00+08:00 | 2027-06-04T17:00:00+08:00 | 4800 | 0 | 0 | START_NO_EARLIER_THAN 2027-02-28T08:00:00+08:00 | 2027-05-26T08:00:00+08:00 2027-06-04T17:00:00+08:00 2027-06-05T08:00:00+08:00 2027-06-14T17:00:00+08:00 4800 4800  | task:56 |
| task:79 | 38 | 79 | D0739720-D5F3-EF11-8B1D-7C214ADD20B5 | 1.3.19 | 3 | 墙后回填土 | activity | True | automatic | FIXED_UNITS | calendar:1 | 2027-06-15T08:00:00+08:00 | 2027-06-19T17:00:00+08:00 | 2400 | 0 | 0 | AS_SOON_AS_POSSIBLE | 2027-06-15T08:00:00+08:00 2027-06-19T17:00:00+08:00 2027-06-15T08:00:00+08:00 2027-06-19T17:00:00+08:00 0 0 True | task:56 |
| task:80 | 39 | 80 | D1739720-D5F3-EF11-8B1D-7C214ADD20B5 | 1.3.20 | 3 | 第一道支撑拆除 | activity | True | automatic | FIXED_UNITS | calendar:1 | 2027-06-20T08:00:00+08:00 | 2027-07-04T17:00:00+08:00 | 7200 | 0 | 0 | START_NO_EARLIER_THAN 2025-11-04T08:00:00+08:00 | 2027-06-20T08:00:00+08:00 2027-07-04T17:00:00+08:00 2027-06-20T08:00:00+08:00 2027-07-04T17:00:00+08:00 0 0 True | task:56 |
| task:309 | 40 | 309 | A82569BA-36AB-F011-8BC3-7C214ADD20B5 | 1.3.21 | 3 | 内外河翼墙施工完成 | activity | True | automatic | FIXED_UNITS | calendar:1 | 2027-07-05T08:00:00+08:00 | 2027-08-03T17:00:00+08:00 | 14400 | 0 | 0 | AS_SOON_AS_POSSIBLE | 2027-07-05T08:00:00+08:00 2027-08-03T17:00:00+08:00 2028-04-11T08:00:00+08:00 2028-05-10T17:00:00+08:00 134880 134880  | task:56 |
| task:308 | 41 | 308 | CF401E3A-36AB-F011-8BC3-7C214ADD20B5 | 1.3.22 | 3 | 泵室施工完成至5.25m高程 | activity | True | automatic | FIXED_UNITS | calendar:1 | 2027-07-05T08:00:00+08:00 | 2027-07-19T17:00:00+08:00 | 7200 | 0 | 0 | AS_SOON_AS_POSSIBLE | 2027-07-05T08:00:00+08:00 2027-07-19T17:00:00+08:00 2027-07-05T08:00:00+08:00 2027-07-19T17:00:00+08:00 0 0 True | task:56 |
| task:81 | 42 | 81 | D2739720-D5F3-EF11-8B1D-7C214ADD20B5 | 1.3.23 | 3 | 水闸施工完成至12.2m高程 | activity | True | automatic | FIXED_UNITS | calendar:1 | 2027-07-05T08:00:00+08:00 | 2027-07-24T17:00:00+08:00 | 9600 | 0 | 0 | AS_SOON_AS_POSSIBLE | 2027-07-05T08:00:00+08:00 2027-07-24T17:00:00+08:00 2027-07-05T08:00:00+08:00 2027-07-24T17:00:00+08:00 0 0 True | task:56 |
| task:84 | 43 | 84 | D3739720-D5F3-EF11-8B1D-7C214ADD20B5 | 1.3.24 | 3 | 闸墩预埋件安装及二期混凝土浇筑 | activity | True | automatic | FIXED_UNITS | calendar:1 | 2027-07-18T08:00:00+08:00 | 2027-07-24T17:00:00+08:00 | 3360 | 0 | 0 | AS_SOON_AS_POSSIBLE | 2027-07-18T08:00:00+08:00 2027-07-24T17:00:00+08:00 2027-09-24T08:00:00+08:00 2027-09-30T17:00:00+08:00 32640 0  | task:56 |
| task:190 | 44 | 190 | FB739720-D5F3-EF11-8B1D-7C214ADD20B5 | 1.3.25 | 3 | 闸门安装 | activity | True | automatic | FIXED_UNITS | calendar:1 | 2027-08-08T08:00:00+08:00 | 2027-08-12T17:00:00+08:00 | 2400 | 0 | 0 | AS_SOON_AS_POSSIBLE | 2027-08-08T08:00:00+08:00 2027-08-12T17:00:00+08:00 2027-10-15T08:00:00+08:00 2027-10-19T17:00:00+08:00 32640 0  | task:56 |
| task:184 | 45 | 184 | F9739720-D5F3-EF11-8B1D-7C214ADD20B5 | 1.3.26 | 3 | 水闸满堂架搭设 | activity | True | automatic | FIXED_UNITS | calendar:1 | 2027-08-13T08:00:00+08:00 | 2027-08-17T17:00:00+08:00 | 2400 | 0 | 0 | AS_SOON_AS_POSSIBLE | 2027-08-13T08:00:00+08:00 2027-08-17T17:00:00+08:00 2027-10-20T08:00:00+08:00 2027-10-24T17:00:00+08:00 32640 0  | task:56 |
| task:202 | 46 | 202 | FF739720-D5F3-EF11-8B1D-7C214ADD20B5 | 1.3.27 | 3 | 水闸施工至启闭机平台梁板 | activity | True | automatic | FIXED_UNITS | calendar:1 | 2027-08-18T08:00:00+08:00 | 2027-09-06T17:00:00+08:00 | 9600 | 0 | 0 | AS_SOON_AS_POSSIBLE | 2027-08-18T08:00:00+08:00 2027-09-06T17:00:00+08:00 2027-10-25T08:00:00+08:00 2027-11-13T17:00:00+08:00 32640 0  | task:56 |
| task:185 | 47 | 185 | FA739720-D5F3-EF11-8B1D-7C214ADD20B5 | 1.3.28 | 3 | 水闸满堂支架拆除 | activity | True | automatic | FIXED_UNITS | calendar:1 | 2027-09-14T08:00:00+08:00 | 2027-09-16T17:00:00+08:00 | 1440 | 0 | 0 | AS_SOON_AS_POSSIBLE | 2027-09-14T08:00:00+08:00 2027-09-16T17:00:00+08:00 2027-11-21T08:00:00+08:00 2027-11-23T17:00:00+08:00 32640 0  | task:56 |
| task:203 | 48 | 203 | 00749720-D5F3-EF11-8B1D-7C214ADD20B5 | 1.3.29 | 3 | 启闭机安装 | activity | True | automatic | FIXED_UNITS | calendar:1 | 2027-09-17T08:00:00+08:00 | 2027-09-19T17:00:00+08:00 | 1440 | 0 | 0 | AS_SOON_AS_POSSIBLE | 2027-09-17T08:00:00+08:00 2027-09-19T17:00:00+08:00 2027-11-24T08:00:00+08:00 2027-11-26T17:00:00+08:00 32640 0  | task:56 |
| task:241 | 49 | 241 | 07749720-D5F3-EF11-8B1D-7C214ADD20B5 | 1.3.30 | 3 | 泵站闸门预埋件及二期混凝土施工 | activity | True | automatic | FIXED_UNITS | calendar:1 | 2027-08-08T08:00:00+08:00 | 2027-08-22T17:00:00+08:00 | 7200 | 0 | 0 | AS_SOON_AS_POSSIBLE | 2027-08-08T08:00:00+08:00 2027-08-22T17:00:00+08:00 2028-04-14T08:00:00+08:00 2028-04-28T17:00:00+08:00 120000 0  | task:56 |
| task:172 | 50 | 172 | F3739720-D5F3-EF11-8B1D-7C214ADD20B5 | 1.3.31 | 3 | 泵站闸门及启闭机安装 | activity | True | automatic | FIXED_UNITS | calendar:1 | 2027-08-30T08:00:00+08:00 | 2027-09-03T17:00:00+08:00 | 2400 | 0 | 0 | AS_SOON_AS_POSSIBLE | 2027-08-30T08:00:00+08:00 2027-09-03T17:00:00+08:00 2028-05-06T08:00:00+08:00 2028-05-10T17:00:00+08:00 120000 120000  | task:56 |
| task:150 | 51 | 150 | EC739720-D5F3-EF11-8B1D-7C214ADD20B5 | 1.3.32 | 3 | 外河进水池、消力池浇筑完成 | activity | True | automatic | FIXED_UNITS | calendar:1 | 2027-08-01T08:00:00+08:00 | 2027-08-15T17:00:00+08:00 | 7200 | 0 | 0 | AS_SOON_AS_POSSIBLE | 2027-08-01T08:00:00+08:00 2027-08-15T17:00:00+08:00 2028-04-14T08:00:00+08:00 2028-04-28T17:00:00+08:00 123360 0  | task:56 |
| task:149 | 52 | 149 | EB739720-D5F3-EF11-8B1D-7C214ADD20B5 | 1.3.33 | 3 | 内河进水池施工完成 | activity | True | automatic | FIXED_UNITS | calendar:1 | 2027-08-01T08:00:00+08:00 | 2027-08-15T17:00:00+08:00 | 7200 | 0 | 0 | AS_SOON_AS_POSSIBLE | 2027-08-01T08:00:00+08:00 2027-08-15T17:00:00+08:00 2028-04-26T08:00:00+08:00 2028-05-10T17:00:00+08:00 129120 129120  | task:56 |
| task:171 | 53 | 171 | F2739720-D5F3-EF11-8B1D-7C214ADD20B5 | 1.3.34 | 3 | 内、外河进出水池清污机安装 | activity | True | automatic | FIXED_UNITS | calendar:1 | 2027-08-23T08:00:00+08:00 | 2027-08-27T17:00:00+08:00 | 2400 | 0 | 0 | AS_SOON_AS_POSSIBLE | 2027-08-23T08:00:00+08:00 2027-08-27T17:00:00+08:00 2028-05-06T08:00:00+08:00 2028-05-10T17:00:00+08:00 123360 123360  | task:56 |
| task:244 | 54 | 244 | 09749720-D5F3-EF11-8B1D-7C214ADD20B5 | 1.4 | 2 | 泵站满堂架搭设 | activity | True | automatic | FIXED_UNITS | calendar:1 | 2027-09-20T08:00:00+08:00 | 2027-10-04T17:00:00+08:00 | 7200 | 0 | 0 | AS_SOON_AS_POSSIBLE | 2027-09-20T08:00:00+08:00 2027-10-04T17:00:00+08:00 2027-11-27T08:00:00+08:00 2027-12-11T17:00:00+08:00 32640 0  | task:116 |
| task:91 | 55 | 91 | D5739720-D5F3-EF11-8B1D-7C214ADD20B5 | 1.5 | 2 | 泵闸上部结构封顶 | activity | True | automatic | FIXED_UNITS | calendar:1 | 2027-10-05T08:00:00+08:00 | 2027-11-23T17:00:00+08:00 | 24000 | 0 | 0 | AS_SOON_AS_POSSIBLE | 2027-10-05T08:00:00+08:00 2027-11-23T17:00:00+08:00 2027-12-12T08:00:00+08:00 2028-01-30T17:00:00+08:00 32640 0  | task:116 |
| task:305 | 56 | 305 | 1F714F7C-19AB-F011-8BC3-7C214ADD20B5 | 1.6 | 2 | 通水验收 | activity | True | automatic | FIXED_UNITS | calendar:1 | 2027-09-20T08:00:00+08:00 | 2027-09-20T17:00:00+08:00 | 480 | 0 | 0 | AS_SOON_AS_POSSIBLE | 2027-09-20T08:00:00+08:00 2027-09-20T17:00:00+08:00 2028-05-11T08:00:00+08:00 2028-05-11T17:00:00+08:00 112320 0  | task:116 |
| task:123 | 57 | 123 | E5739720-D5F3-EF11-8B1D-7C214ADD20B5 | 1.7 | 2 | 围堰拆除 | summary | True | automatic | FIXED_DURATION | calendar:1 | 2027-09-21T08:00:00+08:00 | 2027-09-25T17:00:00+08:00 | 2400 | 0 | 0 | AS_SOON_AS_POSSIBLE | 2027-09-21T08:00:00+08:00 2027-09-25T17:00:00+08:00 2028-05-12T08:00:00+08:00 2028-05-16T17:00:00+08:00 112320 112320  | task:116 |
| task:253 | 58 | 253 | 10749720-D5F3-EF11-8B1D-7C214ADD20B5 | 1.7.1 | 3 | 内外河围堰拆除 | activity | True | automatic | FIXED_UNITS | calendar:1 | 2027-09-21T08:00:00+08:00 | 2027-09-25T17:00:00+08:00 | 2400 | 0 | 0 | START_NO_EARLIER_THAN 2026-02-12T08:00:00+08:00 | 2027-09-21T08:00:00+08:00 2027-09-25T17:00:00+08:00 2028-05-12T08:00:00+08:00 2028-05-16T17:00:00+08:00 112320 112320  | task:123 |
| task:89 | 59 | 89 | D4739720-D5F3-EF11-8B1D-7C214ADD20B5 | 1.8 | 2 | 安装间施工 | summary | True | automatic | FIXED_DURATION | calendar:1 | 2027-07-25T08:00:00+08:00 | 2027-10-15T17:00:00+08:00 | 39840 | 0 | 0 | AS_SOON_AS_POSSIBLE | 2027-07-25T08:00:00+08:00 2027-10-15T17:00:00+08:00 2027-07-25T08:00:00+08:00 2028-05-16T17:00:00+08:00 0 0 True | task:116 |
| task:310 | 60 | 310 | 26D1E652-37AB-F011-8BC3-7C214ADD20B5 | 1.8.1 | 3 | 安装间基坑施工 | activity | True | automatic | FIXED_UNITS | calendar:1 | 2027-07-25T08:00:00+08:00 | 2027-07-31T17:00:00+08:00 | 3360 | 0 | 0 | AS_SOON_AS_POSSIBLE | 2027-07-25T08:00:00+08:00 2027-07-31T17:00:00+08:00 2027-07-25T08:00:00+08:00 2027-07-31T17:00:00+08:00 0 0 True | task:89 |
| task:165 | 61 | 165 | EE739720-D5F3-EF11-8B1D-7C214ADD20B5 | 1.8.2 | 3 | 安装间基础开挖及底板施工 | activity | True | automatic | FIXED_UNITS | calendar:1 | 2027-08-01T08:00:00+08:00 | 2027-08-10T17:00:00+08:00 | 4800 | 0 | 0 | AS_SOON_AS_POSSIBLE | 2027-08-01T08:00:00+08:00 2027-08-10T17:00:00+08:00 2027-08-01T08:00:00+08:00 2027-08-10T17:00:00+08:00 0 0 True | task:89 |
| task:316 | 62 | 316 | 97E11410-C313-F111-8BF0-7C214ADD20B5 | 1.8.3 | 3 | 支撑拆除 | activity | True | automatic | FIXED_UNITS | calendar:1 | 2027-08-18T08:00:00+08:00 | 2027-08-20T17:00:00+08:00 | 1440 | 0 | 0 | AS_SOON_AS_POSSIBLE | 2027-08-18T08:00:00+08:00 2027-08-20T17:00:00+08:00 2028-05-14T08:00:00+08:00 2028-05-16T17:00:00+08:00 129600 129600  | task:89 |
| task:166 | 63 | 166 | EF739720-D5F3-EF11-8B1D-7C214ADD20B5 | 1.8.4 | 3 | 安装间结构施工至牛腿 | activity | True | automatic | FIXED_UNITS | calendar:1 | 2027-08-18T08:00:00+08:00 | 2027-09-07T17:00:00+08:00 | 10080 | 0 | 0 | AS_SOON_AS_POSSIBLE | 2027-08-18T08:00:00+08:00 2027-09-07T17:00:00+08:00 2027-08-18T08:00:00+08:00 2027-09-07T17:00:00+08:00 0 0 True | task:89 |
| task:168 | 64 | 168 | F1739720-D5F3-EF11-8B1D-7C214ADD20B5 | 1.8.5 | 3 | 行车梁安装 | activity | True | automatic | FIXED_UNITS | calendar:1 | 2027-09-29T08:00:00+08:00 | 2027-09-30T17:00:00+08:00 | 960 | 0 | 0 | AS_SOON_AS_POSSIBLE | 2027-09-29T08:00:00+08:00 2027-09-30T17:00:00+08:00 2027-09-29T08:00:00+08:00 2027-09-30T17:00:00+08:00 0 0 True | task:89 |
| task:167 | 65 | 167 | F0739720-D5F3-EF11-8B1D-7C214ADD20B5 | 1.8.6 | 3 | 安装间封顶 | activity | True | automatic | FIXED_UNITS | calendar:1 | 2027-10-01T08:00:00+08:00 | 2027-10-15T17:00:00+08:00 | 7200 | 0 | 0 | AS_SOON_AS_POSSIBLE | 2027-10-01T08:00:00+08:00 2027-10-15T17:00:00+08:00 2027-10-01T08:00:00+08:00 2027-10-15T17:00:00+08:00 0 0 True | task:89 |
| task:173 | 66 | 173 | F4739720-D5F3-EF11-8B1D-7C214ADD20B5 | 1.9 | 2 | 泵闸装饰装修工程 | summary | True | automatic | FIXED_DURATION | calendar:1 | 2027-10-16T08:00:00+08:00 | 2028-01-19T17:00:00+08:00 | 46080 | 0 | 0 | AS_SOON_AS_POSSIBLE | 2027-10-16T08:00:00+08:00 2028-01-19T17:00:00+08:00 2027-10-16T08:00:00+08:00 2028-01-19T17:00:00+08:00 0 0 True | task:116 |
| task:256 | 67 | 256 | 11749720-D5F3-EF11-8B1D-7C214ADD20B5 | 1.9.1 | 3 | 泵闸墙体砌筑 | activity | True | automatic | FIXED_UNITS | calendar:1 | 2027-10-16T08:00:00+08:00 | 2027-11-04T17:00:00+08:00 | 9600 | 0 | 0 | START_NO_EARLIER_THAN 2026-03-18T08:00:00+08:00 | 2027-10-16T08:00:00+08:00 2027-11-04T17:00:00+08:00 2027-11-19T08:00:00+08:00 2027-12-08T17:00:00+08:00 16320 16320  | task:173 |
| task:178 | 68 | 178 | F6739720-D5F3-EF11-8B1D-7C214ADD20B5 | 1.9.2 | 3 | 屋面工程 | activity | True | automatic | FIXED_UNITS | calendar:1 | 2027-10-16T08:00:00+08:00 | 2027-10-29T17:00:00+08:00 | 6720 | 0 | 0 | START_NO_EARLIER_THAN 2026-04-01T08:00:00+08:00 | 2027-10-16T08:00:00+08:00 2027-10-29T17:00:00+08:00 2027-10-16T08:00:00+08:00 2027-10-29T17:00:00+08:00 0 0 True | task:173 |
| task:104 | 69 | 104 | DC739720-D5F3-EF11-8B1D-7C214ADD20B5 | 1.9.3 | 3 | 泵闸窗框外立面安装 | activity | True | automatic | FIXED_UNITS | calendar:1 | 2027-10-30T08:00:00+08:00 | 2027-12-08T17:00:00+08:00 | 19200 | 0 | 0 | START_NO_EARLIER_THAN 2026-06-25T08:00:00+08:00 | 2027-10-30T08:00:00+08:00 2027-12-08T17:00:00+08:00 2027-10-30T08:00:00+08:00 2027-12-08T17:00:00+08:00 0 0 True | task:173 |
| task:105 | 70 | 105 | DD739720-D5F3-EF11-8B1D-7C214ADD20B5 | 1.9.4 | 3 | 泵闸粉刷 | activity | True | automatic | FIXED_UNITS | calendar:1 | 2027-12-09T08:00:00+08:00 | 2027-12-29T17:00:00+08:00 | 10080 | 0 | 0 | AS_SOON_AS_POSSIBLE | 2027-12-09T08:00:00+08:00 2027-12-29T17:00:00+08:00 2027-12-09T08:00:00+08:00 2027-12-29T17:00:00+08:00 0 0 True | task:173 |

| task_id | source_id | source_unique_id | source_guid | wbs | outline_level | name | task_type | active | scheduling_mode | project_task_type | effective_calendar_id | planned_start | planned_finish | duration_minutes | source_work_minutes | percent_complete | constraint | source_calculation | parent_task_id |
| --- | --- | --- | --- | --- | --- | --- | --- | --- | --- | --- | --- | --- | --- | --- | --- | --- | --- | --- | --- |
| task:250 | 71 | 250 | 0E749720-D5F3-EF11-8B1D-7C214ADD20B5 | 1.9.5 | 3 | 内外墙涂料及楼地面施工 | activity | True | automatic | FIXED_UNITS | calendar:1 | 2027-12-30T08:00:00+08:00 | 2028-01-19T17:00:00+08:00 | 10080 | 0 | 0 | AS_SOON_AS_POSSIBLE | 2027-12-30T08:00:00+08:00 2028-01-19T17:00:00+08:00 2027-12-30T08:00:00+08:00 2028-01-19T17:00:00+08:00 0 0 True | task:173 |
| task:246 | 72 | 246 | 0B749720-D5F3-EF11-8B1D-7C214ADD20B5 | 1.10 | 2 | 水泵安装 | summary | True | automatic | FIXED_DURATION | calendar:1 | 2027-12-04T08:00:00+08:00 | 2028-01-22T17:00:00+08:00 | 24000 | 0 | 0 | AS_SOON_AS_POSSIBLE | 2027-12-04T08:00:00+08:00 2028-01-22T17:00:00+08:00 2028-02-10T08:00:00+08:00 2028-03-30T17:00:00+08:00 32640 32640  | task:116 |
| task:269 | 73 | 269 | 15749720-D5F3-EF11-8B1D-7C214ADD20B5 | 1.10.1 | 3 | 泵组安装 | activity | True | automatic | FIXED_UNITS | calendar:1 | 2027-12-04T08:00:00+08:00 | 2027-12-28T17:00:00+08:00 | 12000 | 0 | 0 | START_NO_EARLIER_THAN 2026-06-19T08:00:00+08:00 | 2027-12-04T08:00:00+08:00 2027-12-28T17:00:00+08:00 2028-02-10T08:00:00+08:00 2028-03-05T17:00:00+08:00 32640 0  | task:246 |
| task:271 | 74 | 271 | 17749720-D5F3-EF11-8B1D-7C214ADD20B5 | 1.10.2 | 3 | 电气设备安装 | activity | True | automatic | FIXED_UNITS | calendar:1 | 2027-12-29T08:00:00+08:00 | 2028-01-22T17:00:00+08:00 | 12000 | 0 | 0 | AS_SOON_AS_POSSIBLE | 2027-12-29T08:00:00+08:00 2028-01-22T17:00:00+08:00 2028-03-06T08:00:00+08:00 2028-03-30T17:00:00+08:00 32640 32640  | task:246 |
| task:270 | 75 | 270 | 16749720-D5F3-EF11-8B1D-7C214ADD20B5 | 1.10.3 | 3 | 自动化设备安装 | activity | True | automatic | FIXED_UNITS | calendar:1 | 2027-12-29T08:00:00+08:00 | 2028-01-22T17:00:00+08:00 | 12000 | 0 | 0 | AS_SOON_AS_POSSIBLE | 2027-12-29T08:00:00+08:00 2028-01-22T17:00:00+08:00 2028-03-06T08:00:00+08:00 2028-03-30T17:00:00+08:00 32640 32640  | task:246 |
| task:92 | 76 | 92 | D6739720-D5F3-EF11-8B1D-7C214ADD20B5 | 1.11 | 2 | 管理房施工 | summary | True | automatic | FIXED_DURATION | calendar:1 | 2027-09-05T08:00:00+08:00 | 2028-03-29T17:00:00+08:00 | 99360 | 0 | 0 | AS_SOON_AS_POSSIBLE | 2027-09-05T08:00:00+08:00 2028-03-29T17:00:00+08:00 2027-09-09T08:00:00+08:00 2028-03-29T17:00:00+08:00 0 0 True | task:116 |
| task:95 | 77 | 95 | D7739720-D5F3-EF11-8B1D-7C214ADD20B5 | 1.11.1 | 3 | 土方开挖 | activity | True | automatic | FIXED_UNITS | calendar:1 | 2027-09-05T08:00:00+08:00 | 2027-09-09T17:00:00+08:00 | 2400 | 0 | 0 | START_NO_EARLIER_THAN 2027-09-05T08:00:00+08:00 | 2027-09-05T08:00:00+08:00 2027-09-09T17:00:00+08:00 2027-09-09T08:00:00+08:00 2027-09-13T17:00:00+08:00 1920 0  | task:92 |
| task:96 | 78 | 96 | D8739720-D5F3-EF11-8B1D-7C214ADD20B5 | 1.11.2 | 3 | 基础施工 | activity | True | automatic | FIXED_UNITS | calendar:1 | 2027-09-10T08:00:00+08:00 | 2027-10-04T17:00:00+08:00 | 12000 | 0 | 0 | AS_SOON_AS_POSSIBLE | 2027-09-10T08:00:00+08:00 2027-10-04T17:00:00+08:00 2027-09-14T08:00:00+08:00 2027-10-08T17:00:00+08:00 1920 0  | task:92 |
| task:247 | 79 | 247 | 0C749720-D5F3-EF11-8B1D-7C214ADD20B5 | 1.11.3 | 3 | 电缆沟施工 | activity | True | automatic | FIXED_UNITS | calendar:1 | 2027-10-05T08:00:00+08:00 | 2027-10-19T17:00:00+08:00 | 7200 | 0 | 0 | AS_SOON_AS_POSSIBLE | 2027-10-05T08:00:00+08:00 2027-10-19T17:00:00+08:00 2027-10-09T08:00:00+08:00 2027-10-23T17:00:00+08:00 1920 0  | task:92 |
| task:97 | 80 | 97 | D9739720-D5F3-EF11-8B1D-7C214ADD20B5 | 1.11.4 | 3 | 一层施工 | activity | True | automatic | FIXED_UNITS | calendar:1 | 2027-10-20T08:00:00+08:00 | 2027-11-06T17:00:00+08:00 | 8640 | 0 | 0 | START_NO_EARLIER_THAN 2026-03-01T08:00:00+08:00 | 2027-10-20T08:00:00+08:00 2027-11-06T17:00:00+08:00 2027-10-24T08:00:00+08:00 2027-11-10T17:00:00+08:00 1920 0  | task:92 |
| task:98 | 81 | 98 | DA739720-D5F3-EF11-8B1D-7C214ADD20B5 | 1.11.5 | 3 | 二层施工 | activity | True | automatic | FIXED_UNITS | calendar:1 | 2027-11-14T08:00:00+08:00 | 2027-12-01T17:00:00+08:00 | 8640 | 0 | 0 | AS_SOON_AS_POSSIBLE | 2027-11-14T08:00:00+08:00 2027-12-01T17:00:00+08:00 2027-11-18T08:00:00+08:00 2027-12-05T17:00:00+08:00 1920 0  | task:92 |
| task:99 | 82 | 99 | DB739720-D5F3-EF11-8B1D-7C214ADD20B5 | 1.11.6 | 3 | 墙体砌筑 | activity | True | automatic | FIXED_UNITS | calendar:1 | 2027-12-22T08:00:00+08:00 | 2028-01-15T17:00:00+08:00 | 12000 | 0 | 0 | AS_SOON_AS_POSSIBLE | 2027-12-22T08:00:00+08:00 2028-01-15T17:00:00+08:00 2027-12-26T08:00:00+08:00 2028-01-19T17:00:00+08:00 1920 0  | task:92 |
| task:179 | 83 | 179 | F7739720-D5F3-EF11-8B1D-7C214ADD20B5 | 1.11.7 | 3 | 装饰装修工程 | activity | True | automatic | FIXED_UNITS | calendar:1 | 2028-01-20T08:00:00+08:00 | 2028-03-29T17:00:00+08:00 | 33600 | 0 | 0 | AS_SOON_AS_POSSIBLE | 2028-01-20T08:00:00+08:00 2028-03-29T17:00:00+08:00 2028-01-20T08:00:00+08:00 2028-03-29T17:00:00+08:00 0 0 True | task:92 |
| task:197 | 84 | 197 | FD739720-D5F3-EF11-8B1D-7C214ADD20B5 | 1.12 | 2 | 室外总体 | summary | True | automatic | FIXED_DURATION | calendar:1 | 2028-01-26T08:00:00+08:00 | 2028-04-04T17:00:00+08:00 | 33600 | 0 | 0 | AS_SOON_AS_POSSIBLE | 2028-01-26T08:00:00+08:00 2028-04-04T17:00:00+08:00 2028-03-08T08:00:00+08:00 2028-05-16T17:00:00+08:00 20160 20160  | task:116 |
| task:198 | 85 | 198 | FE739720-D5F3-EF11-8B1D-7C214ADD20B5 | 1.12.1 | 3 | 给排水管道 | activity | True | automatic | FIXED_UNITS | calendar:1 | 2028-01-26T08:00:00+08:00 | 2028-02-09T17:00:00+08:00 | 7200 | 0 | 0 | AS_SOON_AS_POSSIBLE | 2028-01-26T08:00:00+08:00 2028-02-09T17:00:00+08:00 2028-03-08T08:00:00+08:00 2028-03-22T17:00:00+08:00 20160 0  | task:197 |
| task:249 | 86 | 249 | 0D749720-D5F3-EF11-8B1D-7C214ADD20B5 | 1.12.2 | 3 | 电气设备安装及管路敷设 | activity | True | automatic | FIXED_UNITS | calendar:1 | 2028-01-26T08:00:00+08:00 | 2028-02-24T17:00:00+08:00 | 14400 | 0 | 0 | AS_SOON_AS_POSSIBLE | 2028-01-26T08:00:00+08:00 2028-02-24T17:00:00+08:00 2028-03-08T08:00:00+08:00 2028-04-06T17:00:00+08:00 20160 0  | task:197 |
| task:175 | 87 | 175 | F5739720-D5F3-EF11-8B1D-7C214ADD20B5 | 1.12.3 | 3 | 场地及围墙施工 | activity | True | automatic | FIXED_UNITS | calendar:1 | 2028-02-25T08:00:00+08:00 | 2028-04-04T17:00:00+08:00 | 19200 | 0 | 0 | AS_SOON_AS_POSSIBLE | 2028-02-25T08:00:00+08:00 2028-04-04T17:00:00+08:00 2028-04-07T08:00:00+08:00 2028-05-16T17:00:00+08:00 20160 20160  | task:197 |
| task:122 | 88 | 122 | E4739720-D5F3-EF11-8B1D-7C214ADD20B5 | 1.12.4 | 3 | 绿化施工 | activity | True | automatic | FIXED_UNITS | calendar:1 | 2028-02-25T08:00:00+08:00 | 2028-03-10T17:00:00+08:00 | 7200 | 0 | 0 | AS_SOON_AS_POSSIBLE | 2028-02-25T08:00:00+08:00 2028-03-10T17:00:00+08:00 2028-05-02T08:00:00+08:00 2028-05-16T17:00:00+08:00 32160 32160  | task:197 |
| task:236 | 89 | 236 | 04749720-D5F3-EF11-8B1D-7C214ADD20B5 | 1.13 | 2 | 设备调试、试运行 | activity | True | automatic | FIXED_UNITS | calendar:1 | 2028-03-31T08:00:00+08:00 | 2028-05-09T17:00:00+08:00 | 19200 | 0 | 0 | AS_SOON_AS_POSSIBLE | 2028-03-31T08:00:00+08:00 2028-05-09T17:00:00+08:00 2028-03-31T08:00:00+08:00 2028-05-09T17:00:00+08:00 0 0 True | task:116 |
| task:125 | 90 | 125 | E6739720-D5F3-EF11-8B1D-7C214ADD20B5 | 1.14 | 2 | 场地整理、完工验收 | activity | True | automatic | FIXED_UNITS | calendar:1 | 2028-05-10T08:00:00+08:00 | 2028-05-16T17:00:00+08:00 | 3360 | 0 | 0 | AS_SOON_AS_POSSIBLE | 2028-05-10T08:00:00+08:00 2028-05-16T17:00:00+08:00 2028-05-10T08:00:00+08:00 2028-05-16T17:00:00+08:00 0 0 True | task:116 |

Links (dependency_id, predecessor_task_id, successor_task_id, type, source_type_code, lag_minutes, lag_calendar_policy):
- dependency:1 task:314 task:303 FS 1 0 UNSPECIFIED_REQUIRES_ENGINE_PROFILE
- dependency:2 task:236 task:125 FS 1 0 UNSPECIFIED_REQUIRES_ENGINE_PROFILE
- dependency:3 task:97 task:98 FS 1 3360 UNSPECIFIED_REQUIRES_ENGINE_PROFILE
- dependency:4 task:150 task:149 SS 3 0 UNSPECIFIED_REQUIRES_ENGINE_PROFILE
- dependency:5 task:162 task:79 FS 1 0 UNSPECIFIED_REQUIRES_ENGINE_PROFILE
- dependency:6 task:198 task:249 SS 3 0 UNSPECIFIED_REQUIRES_ENGINE_PROFILE
- dependency:7 task:308 task:310 FS 1 2400 UNSPECIFIED_REQUIRES_ENGINE_PROFILE
- dependency:8 task:79 task:80 FS 1 0 UNSPECIFIED_REQUIRES_ENGINE_PROFILE
- dependency:9 task:81 task:241 FS 1 6720 UNSPECIFIED_REQUIRES_ENGINE_PROFILE
- dependency:10 task:98 task:99 FS 1 9600 UNSPECIFIED_REQUIRES_ENGINE_PROFILE
- dependency:11 task:60 task:141 FS 1 0 UNSPECIFIED_REQUIRES_ENGINE_PROFILE
- dependency:12 task:180 task:53 FS 1 0 UNSPECIFIED_REQUIRES_ENGINE_PROFILE
- dependency:13 task:141 task:314 FS 1 960 UNSPECIFIED_REQUIRES_ENGINE_PROFILE
- dependency:14 task:96 task:247 FS 1 0 UNSPECIFIED_REQUIRES_ENGINE_PROFILE
- dependency:15 task:61 task:139 FS 1 0 UNSPECIFIED_REQUIRES_ENGINE_PROFILE
- dependency:16 task:315 task:302 FS 1 0 UNSPECIFIED_REQUIRES_ENGINE_PROFILE
- dependency:17 task:60 task:65 FS 1 0 UNSPECIFIED_REQUIRES_ENGINE_PROFILE
- dependency:18 task:256 task:105 FS 1 0 UNSPECIFIED_REQUIRES_ENGINE_PROFILE
- dependency:19 task:230 task:300 FS 1 0 UNSPECIFIED_REQUIRES_ENGINE_PROFILE
- dependency:20 task:229 task:298 FS 1 0 UNSPECIFIED_REQUIRES_ENGINE_PROFILE
- dependency:21 task:303 task:245 FS 1 0 UNSPECIFIED_REQUIRES_ENGINE_PROFILE
- dependency:22 task:302 task:304 FS 1 0 UNSPECIFIED_REQUIRES_ENGINE_PROFILE
- dependency:23 task:91 task:269 FS 1 4800 UNSPECIFIED_REQUIRES_ENGINE_PROFILE
- dependency:24 task:260 task:298 FS 1 0 UNSPECIFIED_REQUIRES_ENGINE_PROFILE
- dependency:25 task:303 task:162 FS 1 0 UNSPECIFIED_REQUIRES_ENGINE_PROFILE
- dependency:26 task:301 task:300 FS 1 0 UNSPECIFIED_REQUIRES_ENGINE_PROFILE
- dependency:27 task:165 task:316 FS 1 3360 UNSPECIFIED_REQUIRES_ENGINE_PROFILE
- dependency:28 task:165 task:166 FS 1 3360 UNSPECIFIED_REQUIRES_ENGINE_PROFILE
- dependency:29 task:65 task:77 FS 1 1440 UNSPECIFIED_REQUIRES_ENGINE_PROFILE
- dependency:30 task:99 task:198 FS 1 4800 UNSPECIFIED_REQUIRES_ENGINE_PROFILE
- dependency:31 task:105 task:250 FS 1 0 UNSPECIFIED_REQUIRES_ENGINE_PROFILE
- dependency:32 task:184 task:202 FS 1 0 UNSPECIFIED_REQUIRES_ENGINE_PROFILE
- dependency:33 task:305 task:253 FS 1 0 UNSPECIFIED_REQUIRES_ENGINE_PROFILE
- dependency:34 task:203 task:244 FS 1 0 UNSPECIFIED_REQUIRES_ENGINE_PROFILE
- dependency:35 task:244 task:91 FS 1 0 UNSPECIFIED_REQUIRES_ENGINE_PROFILE
- dependency:36 task:304 task:79 FS 1 0 UNSPECIFIED_REQUIRES_ENGINE_PROFILE
- dependency:37 task:58 task:61 FF 0 3360 UNSPECIFIED_REQUIRES_ENGINE_PROFILE
- dependency:38 task:241 task:172 FS 1 3360 UNSPECIFIED_REQUIRES_ENGINE_PROFILE
- dependency:39 task:99 task:179 FS 1 0 UNSPECIFIED_REQUIRES_ENGINE_PROFILE
- dependency:40 task:80 task:309 FS 1 0 UNSPECIFIED_REQUIRES_ENGINE_PROFILE
- dependency:41 task:81 task:89 FS 1 0 UNSPECIFIED_REQUIRES_ENGINE_PROFILE
- dependency:42 task:260 task:229 FS 1 0 UNSPECIFIED_REQUIRES_ENGINE_PROFILE
- dependency:43 task:81 task:84 FF 0 0 UNSPECIFIED_REQUIRES_ENGINE_PROFILE
- dependency:44 task:61 task:140 FS 1 0 UNSPECIFIED_REQUIRES_ENGINE_PROFILE
- dependency:45 task:238 task:300 FS 1 0 UNSPECIFIED_REQUIRES_ENGINE_PROFILE
- dependency:46 task:77 task:79 FS 1 0 UNSPECIFIED_REQUIRES_ENGINE_PROFILE
- dependency:47 task:249 task:175 FS 1 0 UNSPECIFIED_REQUIRES_ENGINE_PROFILE
- dependency:48 task:150 task:171 FS 1 3360 UNSPECIFIED_REQUIRES_ENGINE_PROFILE
- dependency:49 task:250 task:179 FS 1 0 UNSPECIFIED_REQUIRES_ENGINE_PROFILE
- dependency:50 task:104 task:105 FS 1 0 UNSPECIFIED_REQUIRES_ENGINE_PROFILE
- dependency:51 task:141 task:315 FS 1 960 UNSPECIFIED_REQUIRES_ENGINE_PROFILE
- dependency:52 task:202 task:185 FS 1 3360 UNSPECIFIED_REQUIRES_ENGINE_PROFILE
- dependency:53 task:84 task:190 FS 1 6720 UNSPECIFIED_REQUIRES_ENGINE_PROFILE
- dependency:54 task:190 task:184 FS 1 0 UNSPECIFIED_REQUIRES_ENGINE_PROFILE
- dependency:55 task:185 task:203 FS 1 0 UNSPECIFIED_REQUIRES_ENGINE_PROFILE
- dependency:56 task:168 task:167 FS 1 0 UNSPECIFIED_REQUIRES_ENGINE_PROFILE
- dependency:57 task:41 task:259 FS 1 0 UNSPECIFIED_REQUIRES_ENGINE_PROFILE
- dependency:58 task:249 task:122 FS 1 0 UNSPECIFIED_REQUIRES_ENGINE_PROFILE
- dependency:59 task:310 task:165 FS 1 0 UNSPECIFIED_REQUIRES_ENGINE_PROFILE
- dependency:60 task:59 task:60 FS 1 7680 UNSPECIFIED_REQUIRES_ENGINE_PROFILE
- dependency:61 task:56 task:305 FS 1 0 UNSPECIFIED_REQUIRES_ENGINE_PROFILE
- dependency:62 task:95 task:96 FS 1 0 UNSPECIFIED_REQUIRES_ENGINE_PROFILE
- dependency:63 task:81 task:150 FS 1 3360 UNSPECIFIED_REQUIRES_ENGINE_PROFILE
- dependency:64 task:269 task:271 FS 1 0 UNSPECIFIED_REQUIRES_ENGINE_PROFILE
- dependency:65 task:302 task:245 FS 1 0 UNSPECIFIED_REQUIRES_ENGINE_PROFILE
- dependency:66 task:53 task:54 FS 1 0 UNSPECIFIED_REQUIRES_ENGINE_PROFILE
- dependency:67 task:80 task:308 FS 1 0 UNSPECIFIED_REQUIRES_ENGINE_PROFILE
- dependency:68 task:246 task:236 FS 1 0 UNSPECIFIED_REQUIRES_ENGINE_PROFILE
- dependency:69 task:39 task:41 FS 1 0 UNSPECIFIED_REQUIRES_ENGINE_PROFILE
- dependency:70 task:245 task:79 FS 1 0 UNSPECIFIED_REQUIRES_ENGINE_PROFILE
- dependency:71 task:229 task:312 FS 1 0 UNSPECIFIED_REQUIRES_ENGINE_PROFILE
- dependency:72 task:166 task:168 FS 1 10080 UNSPECIFIED_REQUIRES_ENGINE_PROFILE
- dependency:73 task:229 task:230 FS 1 0 UNSPECIFIED_REQUIRES_ENGINE_PROFILE
- dependency:74 task:140 task:59 FS 1 0 UNSPECIFIED_REQUIRES_ENGINE_PROFILE
- dependency:75 task:178 task:104 FS 1 0 UNSPECIFIED_REQUIRES_ENGINE_PROFILE
- dependency:76 task:298 task:238 FS 1 0 UNSPECIFIED_REQUIRES_ENGINE_PROFILE
- dependency:77 task:167 task:178 FS 1 0 UNSPECIFIED_REQUIRES_ENGINE_PROFILE
- dependency:78 task:300 task:180 FS 1 480 UNSPECIFIED_REQUIRES_ENGINE_PROFILE
- dependency:79 task:247 task:97 FS 1 0 UNSPECIFIED_REQUIRES_ENGINE_PROFILE
- dependency:80 task:167 task:256 FS 1 0 UNSPECIFIED_REQUIRES_ENGINE_PROFILE
- dependency:81 task:92 task:236 FS 1 480 UNSPECIFIED_REQUIRES_ENGINE_PROFILE
- dependency:82 task:269 task:270 FS 1 0 UNSPECIFIED_REQUIRES_ENGINE_PROFILE
- dependency:83 task:60 task:307 FS 1 0 UNSPECIFIED_REQUIRES_ENGINE_PROFILE
- dependency:84 task:243 task:58 FS 1 0 UNSPECIFIED_REQUIRES_ENGINE_PROFILE
- dependency:85 task:54 task:243 FS 1 3360 UNSPECIFIED_REQUIRES_ENGINE_PROFILE
- dependency:86 task:311 task:79 FS 1 0 UNSPECIFIED_REQUIRES_ENGINE_PROFILE
- dependency:87 task:259 task:260 FS 1 0 UNSPECIFIED_REQUIRES_ENGINE_PROFILE
- dependency:88 task:298 task:301 FS 1 0 UNSPECIFIED_REQUIRES_ENGINE_PROFILE
- dependency:89 task:80 task:81 FS 1 0 UNSPECIFIED_REQUIRES_ENGINE_PROFILE
- dependency:90 task:77 task:311 FS 1 0 UNSPECIFIED_REQUIRES_ENGINE_PROFILE
